How a schedule from MS Project changed from version to version. A marks actual dates.

## Version 1 (saved 2023-03-12, file Planificacion.mpp)

Note of the change: primera versión del desglose de trabajo para la planificación

| ID | WBS | Task | Duration | Start | Finish | Total float |
| --- | --- | --- | --- | --- | --- | --- |
| 1 | 1 | **TFG** | 1d? | 2009-11-16 | 2009-11-16 | 0d |
| 2 |  | Reuniones | 1d? | 2009-11-16 | 2009-11-16 | 0d |
| 3 | 1.2 | **Investigación** | 1d? | 2009-11-16 | 2009-11-16 | 0d |
| 4 |  | Páginas de referencia | 1d? | 2009-11-16 | 2009-11-16 | 0d |
| 5 |  | Fuentes de información | 1d? | 2009-11-16 | 2009-11-16 | 0d |
| 6 |  | APIs | 1d? | 2009-11-16 | 2009-11-16 | 0d |
| 7 |  | Tecnologías | 1d? | 2009-11-16 | 2009-11-16 | 0d |
| 8 | 1.3 | **Análisis** | 1d? | 2009-11-16 | 2009-11-16 | 0d |
| 9 |  | Definición del sistema | 1d? | 2009-11-16 | 2009-11-16 | 0d |
| 10 |  | Resquisitos del sistema | 1d? | 2009-11-16 | 2009-11-16 | 0d |
| 11 |  | Análisis de diagramas de clases | 1d? | 2009-11-16 | 2009-11-16 | 0d |
| 12 |  | Análisis de casos de uso | 1d? | 2009-11-16 | 2009-11-16 | 0d |
| 13 |  | Análisis de interfaces de usuario | 1d? | 2009-11-16 | 2009-11-16 | 0d |
| 14 |  | Especificación del plan de pruebas | 1d? | 2009-11-16 | 2009-11-16 | 0d |
| 15 | 1.4 | **Diseño** | 1d? | 2009-11-16 | 2009-11-16 | 0d |
| 16 |  | Arquitectura del Sistema | 1d? | 2009-11-16 | 2009-11-16 | 0d |
| 17 |  | Diseño de Clases | 1d? | 2009-11-16 | 2009-11-16 | 0d |
| 18 |  | Diseño de la Base de Datos | 1d? | 2009-11-16 | 2009-11-16 | 0d |
| 19 |  | Diseño de Interfaz de usuario | 1d? | 2009-11-16 | 2009-11-16 | 0d |
| 20 | 1.4.5 | **Realización de diagramas** | 1d? | 2009-11-16 | 2009-11-16 | 0d |
| 21 |  | Diagramas de clases | 1d? | 2009-11-16 | 2009-11-16 | 0d |
| 22 |  | Diagramas de interacción y estados | 1d? | 2009-11-16 | 2009-11-16 | 0d |
| 23 |  | Diagramas de actividades | 1d? | 2009-11-16 | 2009-11-16 | 0d |
| 24 |  | Especificación Técnica del plan de pruebas | 1d? | 2009-11-16 | 2009-11-16 | 0d |
| 25 | 1.5 | **Implementación** | 1d? | 2009-11-16 | 2009-11-16 | 0d |
| 26 |  | Base de datos | 1d? | 2009-11-16 | 2009-11-16 | 0d |
| 27 |  | Interfaz de usuario | 1d? | 2009-11-16 | 2009-11-16 | 0d |
| 28 |  | Lógica de negocio | 1d? | 2009-11-16 | 2009-11-16 | 0d |
| 29 | 1.6 | **Desarrollo de pruebas** | 1d? | 2009-11-16 | 2009-11-16 | 0d |
| 30 |  | Pruebas unitarias | 1d? | 2009-11-16 | 2009-11-16 | 0d |
| 31 |  | Pruebas de integración | 1d? | 2009-11-16 | 2009-11-16 | 0d |
| 32 |  | Pruebas del sistema | 1d? | 2009-11-16 | 2009-11-16 | 0d |
| 33 |  | Pruebas de usabilidad | 1d? | 2009-11-16 | 2009-11-16 | 0d |
| 34 |  | Pruebas de calidad | 1d? | 2009-11-16 | 2009-11-16 | 0d |
| 35 |  | Revisión del proyecto | 1d? | 2009-11-16 | 2009-11-16 | 0d |
| 36 |  | Presentación del proyecto | 1d? | 2009-11-16 | 2009-11-16 | 0d |

## Version 2 (saved 2023-03-18, file PlanificacionInicial.mpp)

Note of the change: Planificaciones del proyecto

Last finish 2009-11-16 → 2023-05-15 (+4928d).

Added:

| ID | Task | Duration | Start | Finish | Predecessors | Resources |
| --- | --- | --- | --- | --- | --- | --- |
| 25 | Pruebas unitarias | 2d | 2023-03-07 | 2023-03-08 | 23 | Diseñador |
| 26 | Pruebas de integración | 2d | 2023-03-09 | 2023-03-10 | 25 | Diseñador |
| 27 | Pruebas del sistema | 2d | 2023-03-13 | 2023-03-14 | 26 | Diseñador |
| 28 | Pruebas de usabilidad | 2d | 2023-03-15 | 2023-03-16 | 27 | Diseñador |
| 30 | Extracción de datos | 3d | 2023-03-17 | 2023-03-21 | 5 | Desarrollador |
| 34 | Visualizar clasificación | 2d | 2023-04-10 | 2023-04-11 | 32 | Desarrollador |
| 35 | Visualizar todos los jugadores | 2d | 2023-04-12 | 2023-04-13 | 34 | Desarrollador |
| 36 | Visualizar todos los equipos | 2d | 2023-04-14 | 2023-04-17 | 35 | Desarrollador |
| 37 | Visualizar estadísticas de un jugador | 5d | 2023-04-18 | 2023-04-24 | 36 | Desarrollador |
| 38 | Visualizar estadísticas de un equipo | 5d | 2023-04-25 | 2023-05-01 | 37 | Desarrollador |
| 39 | Visualizar estadísticas de un partido | 5d | 2023-05-02 | 2023-05-08 | 38 | Desarrollador |
| 40 | Apartado de información del dominio | 5d | 2023-05-09 | 2023-05-15 | 39 | Desarrollador |

Removed: 34 Pruebas de calidad; 35 Revisión del proyecto; 36 Presentación del proyecto

Changed:

| ID | Task | Start | Finish | Duration | Total float | Predecessors | Other |
| --- | --- | --- | --- | --- | --- | --- | --- |
| 1 | **TFG** | 2009-11-16 → 2023-01-20 (+4813d) | 2009-11-16 → 2023-05-15 (+4928d) | 1d? → 82d |  |  |  |
| 2 | Reuniones | 2009-11-16 → 2023-01-25 (+4818d) | 2009-11-16 → 2023-04-12 (+4895d) | 1d? → 12h | 0d → 20d |  | resources none → Consultor |
| 3 | **Investigación** | 2009-11-16 → 2023-01-20 (+4813d) | 2009-11-16 → 2023-01-23 (+4816d) | 1d? → 2d |  |  |  |
| 4 | Páginas de referencia | 2009-11-16 → 2023-01-20 (+4813d) | 2009-11-16 → 2023-01-20 (+4813d) | 1d? → 1d | 0d → 38d |  | resources none → Desarrollador |
| 5 | Fuentes de información | 2009-11-16 → 2023-01-23 (+4816d) | 2009-11-16 → 2023-01-23 (+4816d) | 1d? → 1d | 0d → 38d | none → 4 | resources none → Desarrollador |
| 6 | Tecnologías | 2009-11-16 → 2023-01-20 (+4813d) | 2009-11-16 → 2023-01-20 (+4813d) | 1d? → 1d |  |  | resources none → Analista |
| 7 | APIs | 2009-11-16 → 2023-01-23 (+4816d) | 2009-11-16 → 2023-01-23 (+4816d) | 1d? → 1d |  | none → 6 | resources none → Analista |
| 8 | **Análisis** | 2009-11-16 → 2023-01-24 (+4817d) | 2009-11-16 → 2023-02-13 (+4837d) | 1d? → 15d |  |  |  |
| 9 | Definición del sistema | 2009-11-16 → 2023-01-24 (+4817d) | 2009-11-16 → 2023-01-25 (+4818d) | 1d? → 2d |  | none → 7 | resources none → Analista |
| 10 | Requisitos del sistema | 2009-11-16 → 2023-01-26 (+4819d) | 2009-11-16 → 2023-01-30 (+4823d) | 1d? → 3d |  | none → 9 | was named Resquisitos del sistema; resources none → Analista |
| 11 | Análisis de diagramas de clases | 2009-11-16 → 2023-01-31 (+4824d) | 2009-11-16 → 2023-02-01 (+4825d) | 1d? → 2d |  | none → 10 | resources none → Analista |
| 12 | Análisis de casos de uso y escenarios | 2009-11-16 → 2023-02-02 (+4826d) | 2009-11-16 → 2023-02-03 (+4827d) | 1d? → 2d |  | none → 11 | was named Análisis de casos de uso; resources none → Analista |
| 13 | Análisis de interfaces de usuario | 2009-11-16 → 2023-02-06 (+4830d) | 2009-11-16 → 2023-02-06 (+4830d) | 1d? → 1d |  | none → 12 | resources none → Analista |
| 14 | Especificación del plan de pruebas | 2009-11-16 → 2023-02-07 (+4831d) | 2009-11-16 → 2023-02-13 (+4837d) | 1d? → 5d |  | none → 13 | resources none → Analista |
| 15 | **Diseño** | 2009-11-16 → 2023-02-14 (+4838d) | 2009-11-16 → 2023-03-16 (+4868d) | 1d? → 23d |  | none → 8 |  |
| 16 | Arquitectura del Sistema | 2009-11-16 → 2023-02-14 (+4838d) | 2009-11-16 → 2023-02-16 (+4840d) | 1d? → 3d |  |  | resources none → Diseñador |
| 17 | Diseño de Clases | 2009-11-16 → 2023-02-17 (+4841d) | 2009-11-16 → 2023-02-20 (+4844d) | 1d? → 2d |  | none → 16 | resources none → Diseñador |
| 18 | Diseño de la Base de Datos | 2009-11-16 → 2023-02-21 (+4845d) | 2009-11-16 → 2023-02-22 (+4846d) | 1d? → 2d |  | none → 17 | resources none → Diseñador |
| 19 | Diseño de Interfaz de usuario | 2009-11-16 → 2023-02-23 (+4847d) | 2009-11-16 → 2023-02-24 (+4848d) | 1d? → 2d |  | none → 18 | resources none → Diseñador |
| 20 | **Realización de diagramas** | 2009-11-16 → 2023-02-27 (+4851d) | 2009-11-16 → 2023-03-06 (+4858d) | 1d? → 6d |  |  |  |
| 21 | Diagramas de clases | 2009-11-16 → 2023-02-27 (+4851d) | 2009-11-16 → 2023-02-28 (+4852d) | 1d? → 2d |  | none → 19 | resources none → Diseñador |
| 22 | Diagramas de interacción | 2009-11-16 → 2023-03-01 (+4853d) | 2009-11-16 → 2023-03-02 (+4854d) | 1d? → 2d |  | none → 21 | was named Diagramas de interacción y estados; resources none → Diseñador |
| 23 | Diagramas de actividades | 2009-11-16 → 2023-03-03 (+4855d) | 2009-11-16 → 2023-03-06 (+4858d) | 1d? → 2d |  | none → 22 | resources none → Diseñador |
| 24 | **Especificación Técnica del plan de pruebas** | 2009-11-16 → 2023-03-07 (+4859d) | 2009-11-16 → 2023-03-16 (+4868d) | 1d? → 8d |  |  |  |
| 29 | **Implementación** | 2009-11-16 → 2023-03-17 (+4869d) | 2009-11-16 → 2023-05-15 (+4928d) | 1d? → 42d |  | none → 15 |  |
| 31 | Base de datos | 2009-11-16 → 2023-03-22 (+4874d) | 2009-11-16 → 2023-03-24 (+4876d) | 1d? → 3d |  | none → 30 | resources none → Desarrollador |
| 32 | Interfaz de usuario | 2009-11-16 → 2023-03-27 (+4879d) | 2009-11-16 → 2023-04-07 (+4890d) | 1d? → 10d |  | none → 31 | resources none → Desarrollador |
| 33 | **Lógica de negocio** | 2009-11-16 → 2023-04-10 (+4893d) | 2009-11-16 → 2023-05-15 (+4928d) | 1d? → 26d |  |  |  |
| 41 | **Desarrollo de pruebas** | 2009-11-16 → 2023-03-17 (+4869d) | 2009-11-16 → 2023-04-03 (+4886d) | 1d? → 12d | 0d → 30d | none → 15 |  |
| 42 | Pruebas unitarias | 2009-11-16 → 2023-03-17 (+4869d) | 2009-11-16 → 2023-03-21 (+4873d) | 1d? → 3d | 0d → 30d |  | resources none → Tester |
| 43 | Pruebas de integración | 2009-11-16 → 2023-03-22 (+4874d) | 2009-11-16 → 2023-03-24 (+4876d) | 1d? → 3d | 0d → 30d | none → 42 | resources none → Tester |
| 44 | Pruebas del sistema | 2009-11-16 → 2023-03-27 (+4879d) | 2009-11-16 → 2023-03-29 (+4881d) | 1d? → 3d | 0d → 30d | none → 43 | resources none → Tester |
| 45 | Pruebas de usabilidad | 2009-11-16 → 2023-03-30 (+4882d) | 2009-11-16 → 2023-04-03 (+4886d) | 1d? → 3d | 0d → 30d | none → 44 | resources none → Tester |

## Version 3 (saved 2023-03-18, file PlanificacionFinal.mpp)

Note of the change: Planificaciones del proyecto

Last finish stays 2023-05-15. Complete tasks 0 → 4.

Changed:

| ID | Task | Start | Finish | Complete | Total float |
| --- | --- | --- | --- | --- | --- |
| 1 | **TFG** | 2023-01-20 A |  | 0% → 4% |  |
| 2 | Reuniones | 2023-01-25 A |  | 0% → 25% |  |
| 3 | **Investigación** | 2023-01-20 A | 2023-01-23 A | 0% → 100% | 0d → none |
| 4 | Páginas de referencia | 2023-01-20 A | 2023-01-20 A | 0% → 100% | 38d → none |
| 5 | Fuentes de información | 2023-01-23 A | 2023-01-23 A | 0% → 100% | 38d → none |
| 6 | Tecnologías | 2023-01-20 A | 2023-01-20 A | 0% → 100% | 0d → none |
| 7 | APIs | 2023-01-23 A | 2023-01-23 A | 0% → 100% | 0d → none |
